# caarray_schedule_2_2_0

Schedule from MS Project, 2008-08-14 to 2009-01-13, A marks actual dates.
Sony Electronics, Inc.

## Calendars

- Standard: Mon-Fri 08:00-12:00, 13:00-17:00; Sat-Sun off. Exceptions (off unless hours are given): 2008-11-11 (Veterans Day), 2008-11-27 (Thanksgiving), 2008-12-24 to 2009-01-02 (Christmas to New Years).

## Resources

| Resource |
| --- |
| rsrinivasa |
| dkokotov |
| klemmj |
| duncanmk |

## Schedule

| ID | WBS | Task | Type | Duration | Start | Finish | Predecessors | Complete | Remaining | Total slack | Free slack | Constraint | Resources | Work | Actual work |
| --- | --- | --- | --- | --- | --- | --- | --- | --- | --- | --- | --- | --- | --- | --- | --- |
| 1 | 1 | **Milestone: Beging 2.2.0 Release** |  | 99d? | 2008-08-14 A | 2009-01-13 |  |  | 98.7d? | 0d |  |  |  | 40h | 6h |
| 2 | 1.1 | **Inception** |  | 22.33d? | 2008-08-14 A | 2008-09-15 |  | 3% | 21.57d? | 76.67d |  |  |  | 40h | 6h |
| 3 | 1.1.1 | Milestone: Begin Inception/Elaboration | milestone | 0d | 2008-08-14 | 2008-08-14 |  |  |  | 99d |  |  |  |  |  |
| 4 | 1.1.2 | **Requirements** |  | 20d? | 2008-08-14 | 2008-09-10 |  |  |  | 79d |  |  |  | 24h |  |
| 5 | 1.1.2.1 | Document Use cases |  | 20d? | 2008-08-14 | 2008-09-10 |  |  |  | 78d |  | start no earlier than 2008-08-14 | rsrinivasa [15%] | 24h |  |
| 6 | 1.1.3 | **Project Management** |  | 22.33d? | 2008-08-14 A | 2008-09-15 |  | 41% | 13.2d? | 76.67d |  |  |  | 16h | 6h |
| 7 | 1.1.3.1 | Milestone: Begin project management | milestone | 0d | 2008-08-14 | 2008-08-14 |  |  |  | 22.33d |  |  |  |  |  |
| 8 | 1.1.3.2 | Estimate LOEs |  | 1.5d? | 2008-08-14 A | 2008-09-12 |  | 50% | 0.75d? | 0d |  | finish no earlier than 2008-09-12 | dkokotov | 12h | 6h |
| 9 | 1.1.3.3 | Define release scope |  | 0.33d? | 2008-09-15 | 2008-09-15 | 8 |  |  | 0d |  |  | klemmj [37.5%]; duncanmk [37.5%]; rsrinivasa [37.5%]; dkokotov [37.5%] | 4h |  |
| 10 | 1.1.3.4 | Milestone: Complete project management | milestone | 0d | 2008-09-15 | 2008-09-15 | 9 |  |  | 0d |  |  |  |  |  |
| 11 | 1.1.4 | Milestone: Complete Inception/Elaboration | milestone | 0d | 2008-09-15 | 2008-09-15 | 10 |  |  | 0d |  |  |  |  |  |
| 12 | 1.2 | **Construction Alpha1** |  | 51.67d? | 2008-09-15 | 2008-11-26 | 11 |  |  | 0d |  |  |  |  |  |
| 13 | 1.2.1 | Milestone: Begin Alpha1 Construction | milestone | 0d | 2008-09-15 | 2008-09-15 |  |  |  | 75.67d |  |  |  |  |  |
| 14 | 1.2.2 | **Implementation** |  | 32.67d? | 2008-09-15 | 2008-10-29 |  |  |  | 0d |  |  |  |  |  |
| 15 | 1.2.2.1 | Develop alpha1 features and defects |  | 31.67d? | 2008-09-15 | 2008-10-28 | 11 |  |  | 0d |  | finish no earlier than 2008-10-28 |  |  |  |
| 16 | 1.2.2.2 | Verify Defects on DEV |  | 1d | 2008-10-29 | 2008-10-29 | 15 |  |  | 0d |  |  |  |  |  |
| 17 | 1.2.2.3 | Milestone: Deploy Alpha1 to QA | milestone | 0d | 2008-10-29 | 2008-10-29 | 16 |  |  | 0d |  |  |  |  |  |
| 18 | 1.2.3 | **Test** |  | 19d | 2008-10-30 | 2008-11-26 | 17 |  |  | 25d |  |  |  |  |  |
| 19 | 1.2.3.1 | Verify new features and defects on QA |  | 10d | 2008-10-30 | 2008-11-13 | 17 |  |  | 25d | 0d |  |  |  |  |
| 20 | 1.2.3.2 | Regression Test on QA |  | 10d | 2008-10-30 | 2008-11-13 | 17 |  |  | 26d | 1d |  |  |  |  |
| 21 | 1.2.3.3 | Deploy to Stage |  | 1d | 2008-11-14 | 2008-11-14 | 19 |  |  | 25d | 0d |  |  |  |  |
| 22 | 1.2.3.4 | Verify new features and defects on Stage |  | 7d | 2008-11-17 | 2008-11-25 | 21 |  |  | 26d | 1d |  |  |  |  |
| 23 | 1.2.3.5 | Regression Test on Stage |  | 5d | 2008-11-17 | 2008-11-21 | 20, 21 |  |  | 25d | 0d |  |  |  |  |
| 24 | 1.2.3.6 | Installer Testing |  | 3d | 2008-11-24 | 2008-11-26 | 23 |  |  | 25d | 0d |  |  |  |  |
| 25 | 1.2.3.7 | Milestone: Alpha1 testing completed | milestone | 0d | 2008-11-26 | 2008-11-26 | 22, 24 |  |  | 25d | 0d |  |  |  |  |
| 26 | 1.2.4 | Milestone: Complete Alpha1 Construction | milestone | 0d | 2008-11-26 | 2008-11-26 | 25 |  |  | 25d |  |  |  |  |  |

| ID | WBS | Task | Type | Duration | Start | Finish | Predecessors | Total slack | Free slack | Constraint |
| --- | --- | --- | --- | --- | --- | --- | --- | --- | --- | --- |
| 27 | 1.3 | **Construction RC 1** |  | 24d | 2008-10-29 | 2008-12-04 | 17 | 0d |  |  |
| 28 | 1.3.1 | Milestone: Begin RC1 Construction | milestone | 0d | 2008-10-29 | 2008-10-29 | 17 | 44d |  |  |
| 29 | 1.3.2 | **Implementation** |  | 11d | 2008-10-30 | 2008-11-14 |  | 0d |  |  |
| 30 | 1.3.2.1 | Develop RC1 features and defects |  | 10d | 2008-10-30 | 2008-11-13 | 17 | 0d |  | finish no earlier than 2008-10-28 |
| 31 | 1.3.2.2 | Verify Defects on DEV |  | 1d | 2008-11-14 | 2008-11-14 | 30 | 0d |  |  |
| 32 | 1.3.2.3 | Milestone: Deploy RC1 to QA | milestone | 0d | 2008-11-14 | 2008-11-14 | 31 | 0d |  |  |
| 33 | 1.3.3 | **Test** |  | 13d | 2008-11-17 | 2008-12-04 | 32 | 20d |  |  |
| 34 | 1.3.3.1 | Verify new features and defects on QA |  | 7d | 2008-11-17 | 2008-11-25 | 32 | 20d | 0d |  |
| 35 | 1.3.3.2 | Regression Test on QA |  | 7d | 2008-11-17 | 2008-11-25 | 32 | 21d | 0d |  |
| 36 | 1.3.3.3 | Deploy to Stage |  | 1d | 2008-11-26 | 2008-11-26 | 34 | 20d | 0d |  |
| 37 | 1.3.3.4 | Verify new features and defects on Stage |  | 5d | 2008-11-26 | 2008-12-03 | 34 | 21d | 0d |  |
| 38 | 1.3.3.5 | Regression Test on Stage |  | 5d | 2008-11-26 | 2008-12-03 | 34, 35 | 21d |  |  |
| 39 | 1.3.3.6 | Installer Testing |  | 5d | 2008-11-17 | 2008-11-21 | 32 | 28d |  |  |
| 40 | 1.3.3.7 | App Scan RC1 |  | 5d | 2008-11-28 | 2008-12-04 | 36 | 20d |  |  |
| 41 | 1.3.3.8 | Deployment Test |  | 3d | 2008-11-17 | 2008-11-19 | 32 | 30d | 9d |  |
| 42 | 1.3.3.9 | Milestone: RC1 testing completed | milestone | 0d | 2008-12-03 | 2008-12-03 | 37, 41 | 21d | 0d |  |
| 43 | 1.3.4 | Milestone: Complete RC1 Construction | milestone | 0d | 2008-12-03 | 2008-12-03 | 42 | 21d |  |  |
| 44 | 1.4 | **Construction RC2** |  | 21d | 2008-11-14 | 2008-12-16 | 32 | 0d |  |  |
| 45 | 1.4.1 | Milestone: Begin RC2 Construction | milestone | 0d | 2008-11-14 | 2008-11-14 |  | 33d |  |  |
| 46 | 1.4.2 | **Implementation** |  | 8d | 2008-11-17 | 2008-11-26 |  | 0d |  |  |
| 47 | 1.4.2.1 | Develop RC1 defects |  | 7d | 2008-11-17 | 2008-11-25 | 32 | 0d |  |  |
| 48 | 1.4.2.2 | Verify Defects on DEV |  | 1d | 2008-11-26 | 2008-11-26 | 47 | 0d |  |  |
| 49 | 1.4.2.3 | Milestone: Deploy RC2 to QA | milestone | 0d | 2008-11-26 | 2008-11-26 | 48 | 0d |  |  |
| 50 | 1.4.3 | **Test** |  | 13d | 2008-11-28 | 2008-12-16 | 49 | 0d |  |  |
| 51 | 1.4.3.1 | Verify defects on QA |  | 5d | 2008-11-28 | 2008-12-04 |  | 0d |  |  |
| 52 | 1.4.3.2 | Regression Test on QA |  | 5d | 2008-11-28 | 2008-12-04 |  | 0d |  |  |
| 53 | 1.4.3.3 | Deployment Test |  | 3d | 2008-11-28 | 2008-12-02 | 49 | 22d |  |  |
| 54 | 1.4.3.4 | Deploy to Stage |  | 1d | 2008-12-05 | 2008-12-05 | 51 | 12d | 0d |  |
| 55 | 1.4.3.5 | App Scan |  | 3d | 2008-12-08 | 2008-12-10 | 54 | 12d | 0d |  |
| 56 | 1.4.3.6 | Verify defects on Stage |  | 4d | 2008-12-11 | 2008-12-16 | 55 | 12d | 0d |  |
| 57 | 1.4.3.7 | Regression Test on Stage |  | 4d | 2008-12-11 | 2008-12-16 | 55 | 12d | 0d |  |
| 58 | 1.4.3.8 | Installer Testing |  | 3d | 2008-11-28 | 2008-12-02 | 49 | 9d | 0d |  |
| 59 | 1.4.3.9 | Milestone: RC2 testing completed | milestone | 0d | 2008-12-16 | 2008-12-16 | 55, 56, 57, 58 | 12d | 0d |  |
| 60 | 1.4.4 | Milestone: Complete RC2 Construction | milestone | 0d | 2008-12-16 | 2008-12-16 | 59 | 12d |  |  |

| ID | WBS | Task | Type | Duration | Start | Finish | Predecessors | Total slack | Free slack |
| --- | --- | --- | --- | --- | --- | --- | --- | --- | --- |
| 61 | 1.5 | **Construction RC3** |  | 16d | 2008-12-04 | 2009-01-07 | 51, 52 | 0d |  |
| 62 | 1.5.1 | Milestone: Begin RC3 Construction | milestone | 0d | 2008-12-04 | 2008-12-04 |  | 20d |  |
| 63 | 1.5.2 | **Implementation** |  | 6d | 2008-12-05 | 2008-12-12 |  | 0d |  |
| 64 | 1.5.2.1 | Develop RC2 defects |  | 5d | 2008-12-05 | 2008-12-11 |  | 0d |  |
| 65 | 1.5.2.2 | Verify Defects on DEV |  | 1d | 2008-12-12 | 2008-12-12 | 64 | 0d |  |
| 66 | 1.5.2.3 | Milestone: Deploy RC3 to QA | milestone | 0d | 2008-12-12 | 2008-12-12 | 65 | 0d |  |
| 67 | 1.5.3 | **Test** |  | 10d | 2008-12-15 | 2009-01-07 | 66 | 0d |  |
| 68 | 1.5.3.1 | Verify defects on QA |  | 3d | 2008-12-15 | 2008-12-17 |  | 0d |  |
| 69 | 1.5.3.2 | Regression Test on QA |  | 5d | 2008-12-15 | 2008-12-19 |  | 9d |  |
| 70 | 1.5.3.3 | Deploy to Stage |  | 1d | 2008-12-18 | 2008-12-18 | 68 | 0d |  |
| 71 | 1.5.3.4 | App Scan |  | 3d | 2008-12-19 | 2008-12-23 | 70 | 0d |  |
| 72 | 1.5.3.5 | Verify defects on Stage |  | 3d | 2009-01-05 | 2009-01-07 | 71 | 0d |  |
| 73 | 1.5.3.6 | Regression Test on Stage |  | 3d | 2009-01-05 | 2009-01-07 | 71 | 0d |  |
| 74 | 1.5.3.7 | Installer Testing |  | 3d | 2008-12-15 | 2008-12-17 | 66 | 2d | 0d |
| 75 | 1.5.3.8 | LSD Complinace Testing |  | 5d | 2008-12-18 | 2009-01-05 | 74 | 2d |  |
| 76 | 1.5.3.9 | Milestone: RC3 testing completed | milestone | 0d | 2009-01-07 | 2009-01-07 | 71, 72, 73, 74, 75 | 0d |  |
| 77 | 1.5.4 | Milestone: Complete RC3 Construction | milestone | 0d | 2009-01-07 | 2009-01-07 | 76 | 0d |  |
| 78 | 1.6 | **Transition** |  | 99d? | 2008-08-14 | 2009-01-13 |  | 0d |  |
| 79 | 1.6.1 | **Configuration and Change Management** |  | 99d? | 2008-08-14 | 2009-01-13 |  | 0d |  |
| 80 | 1.6.1.1 | Milestone: Begin Configuration and Change Mgmt | milestone | 0d | 2008-08-14 | 2008-08-14 |  | 98d |  |
| 81 | 1.6.1.2 | **Documentation** |  | 23d? | 2008-11-14 | 2008-12-18 |  | 10d |  |
| 82 | 1.6.1.2.1 | Milestone: Begin Documentation | milestone | 0d | 2008-11-14 | 2008-11-14 | 32 | 33d |  |
| 83 | 1.6.1.2.2 | **Update User Guide** |  | 15d | 2008-11-14 | 2008-12-08 |  | 14d |  |
| 84 | 1.6.1.2.2.1 | Milestone: Begin User Guide Update | milestone | 0d | 2008-11-14 | 2008-11-14 | 32 | 33d |  |
| 85 | 1.6.1.2.2.2 | GUI change summary to Jill |  | 2d | 2008-11-17 | 2008-11-18 | 32 | 14d | 0d |
| 86 | 1.6.1.2.2.3 | Update User Guide |  | 5d | 2008-11-19 | 2008-11-25 | 85 | 14d | 0d |
| 87 | 1.6.1.2.2.4 | Review User Guide |  | 4d | 2008-11-26 | 2008-12-02 | 86 | 14d | 0d |
| 88 | 1.6.1.2.2.5 | Incorporate feedback to User Guide |  | 4d | 2008-12-03 | 2008-12-08 | 87 | 14d | 0d |
| 89 | 1.6.1.2.2.6 | Milestone: User Guide Updated for 2.1.1 | milestone | 0d | 2008-12-08 | 2008-12-08 | 88 | 14d | 5d |

| ID | WBS | Task | Type | Duration | Start | Finish | Predecessors | Total slack | Free slack |
| --- | --- | --- | --- | --- | --- | --- | --- | --- | --- |
| 90 | 1.6.1.2.3 | **Update Install Guide** |  | 15d? | 2008-11-26 | 2008-12-18 |  | 10d |  |
| 91 | 1.6.1.2.3.1 | Milestone: Begin Install Guide Update | milestone | 0d | 2008-11-26 | 2008-11-26 | 49 | 25d |  |
| 92 | 1.6.1.2.3.2 | Send install guide update to Jill: RC2 |  | 1d | 2008-12-03 | 2008-12-03 | 58 | 9d | 0d |
| 93 | 1.6.1.2.3.3 | Update Install Guide: RC3 |  | 3d | 2008-12-04 | 2008-12-08 | 92 | 9d | 0d |
| 94 | 1.6.1.2.3.4 | Send install guide update to Jill: RC3 |  | 1d? | 2008-12-18 | 2008-12-18 | 74 | 10d |  |
| 95 | 1.6.1.2.3.5 | Update Install Guide: RC3 |  | 2d | 2008-12-09 | 2008-12-10 | 93 | 9d | 0d |
| 96 | 1.6.1.2.3.6 | Review install guide |  | 3d | 2008-12-11 | 2008-12-15 | 95 | 9d | 0d |
| 97 | 1.6.1.2.3.7 | Milestone: Complete Install Guide | milestone | 0d | 2008-12-15 | 2008-12-15 | 96 | 9d | 0d |
| 98 | 1.6.1.2.4 | Milestone: Complete Documentation | milestone | 0d | 2008-12-15 | 2008-12-15 | 89, 97 | 9d |  |
| 99 | 1.6.1.3 | **Upload release artifacts** |  | 4d | 2009-01-07 | 2009-01-13 | 77, 98 | 0d |  |
| 100 | 1.6.1.3.1 | Milestone: Begin preparation of release artifacts | milestone | 0d | 2009-01-07 | 2009-01-07 |  | 4d |  |
| 101 | 1.6.1.3.2 | Prepare 2.2.0 Release Note |  | 1d | 2009-01-08 | 2009-01-08 |  | 3d |  |
| 102 | 1.6.1.3.3 | Prepare 2.2.0 client.jar |  | 1d | 2009-01-08 | 2009-01-08 |  | 3d |  |
| 103 | 1.6.1.3.4 | Prepare 2.2.0 javadoc |  | 1d | 2009-01-08 | 2009-01-08 |  | 3d |  |
| 104 | 1.6.1.3.5 | Upload installer |  | 1d | 2009-01-08 | 2009-01-08 |  | 3d |  |
| 105 | 1.6.1.3.6 | Upload documentation |  | 1d | 2009-01-08 | 2009-01-08 |  | 3d |  |
| 106 | 1.6.1.3.7 | Update Download Center |  | 4d | 2009-01-08 | 2009-01-13 |  | 0d |  |
| 107 | 1.6.1.3.8 | Update Tools Page |  | 2d | 2009-01-08 | 2009-01-09 |  | 2d |  |
| 108 | 1.6.1.3.9 | Update LSD Files Tab |  | 1d | 2009-01-08 | 2009-01-08 |  | 3d |  |
| 109 | 1.6.1.3.10 | Update Landing Site |  | 1d | 2009-01-08 | 2009-01-08 |  | 3d |  |
| 110 | 1.6.1.3.11 | Milestone: Complete release artifact preparation | milestone | 0d | 2009-01-13 | 2009-01-13 | 101, 102, 103, 104, 105, 106, 107, 108, 109 | 0d |  |
| 111 | 1.6.1.4 | Milestone: Complete Configuration Management | milestone | 0d | 2009-01-13 | 2009-01-13 | 110 | 0d |  |
| 112 | 1.6.2 | **Environment** |  | 4d | 2009-01-07 | 2009-01-13 |  | 0d |  |
| 113 | 1.6.2.1 | Milestone: Begin deployment to PROD activities | milestone | 0d | 2009-01-07 | 2009-01-07 | 77 | 4d |  |
| 114 | 1.6.2.2 | Deploy to PROD |  | 2d | 2009-01-08 | 2009-01-09 | 77 | 0d |  |
| 115 | 1.6.2.3 | Verify PROD Deployment |  | 2d | 2009-01-12 | 2009-01-13 | 114 | 0d |  |
| 116 | 1.6.2.4 | Milestone: Complete PROD deployment activities | milestone | 0d | 2009-01-13 | 2009-01-13 | 115, 111 | 0d |  |
